# Projeto Vídeo Institucional V4.0

Schedule from MS Project, 2024-01-01 to 2024-03-19, costs in R$.

## Calendars

- Padrão: Mon-Fri 09:00-12:00, 13:00-18:00; Sat-Sun off. Exceptions (off unless hours are given): 2024-01-11 to 2024-01-12 (Recesso empresarial), 2024-02-12 to 2024-02-13 (Carnaval), 2024-02-14 14:00-18:00 (Quarta-Feira de Cinzas).
- Dia de Filmagem: Mon-Sun 09:00-12:00, 13:00-22:00. Exceptions (off unless hours are given): 2024-01-11 to 2024-01-12 (Recesso empresarial), 2024-02-12 to 2024-02-13 (Carnaval), 2024-02-14 14:00-18:00 (Quarta-Feira de Cinzas).

## Resources

| Resource | Group | Unit | Rate | Cost per use |
| --- | --- | --- | --- | --- |
| Cenografista | Staff |  | 100 |  |
| Figurinista | Staff |  | 25 |  |
| Maquiador | Staff |  | 12.5 |  |
| Editor | Staff |  | 200 |  |
| Animador (Efeitos Especiais) | Staff |  | 200 |  |
| Diretor | Staff |  | 37.5 |  |
| Diretor de Fotografia | Staff |  | 25 |  |
| Designer | Staff |  | 100 |  |
| Desenhista | Staff |  | 150 |  |
| Técnico de Áudio | Equipe técnica |  | 150 |  |
| Técnico de Filmagem | Equipe técnica |  | 150 |  |
| Técnico de Iluminação | Equipe técnica |  | 150 |  |
| Cameraman | Equipe técnica |  | 100 |  |
| Iluminador | Equipe técnica |  | 100 |  |
| Operador de Som | Equipe técnica |  | 100 |  |
| Produtor Executivo (usuário) | Membros da empresa |  | 37.5 |  |
| Serviço de Limpeza | Prestadores de Serviço |  |  |  |
| Projeto Cenografia | Prestadores de Serviço |  |  |  |
| Câmeras | Equipamentos | unid. | 300 |  |
| Microfones | Equipamentos | unid. | 50 |  |
| Cabos | Equipamentos | m. | 15 |  |
| Spots de Luz | Equipamentos | unid. | 150 |  |
| Mesa de Som | Equipamentos | unid. | 200 |  |
| Mesa de Luz | Equipamentos | unid. | 200 |  |
| Gerador | Equipamentos | unid. | 500 | 250 |
| Roteirista | Staff |  | 37.5 |  |
| Staff | Orçamento |  |  |  |
| Equipe técnica | Orçamento |  |  |  |
| Membros da empresa | Orçamento |  |  |  |
| Prestadores de Serviço | Orçamento |  |  |  |
| Equipamentos | Orçamento |  |  |  |
| Artista 1 | Elenco |  | 312.5 |  |
| Artista 2 | Elenco |  | 312.5 |  |
| Artista 3 | Elenco |  | 312.5 |  |
| Artista 4 | Elenco |  | 312.5 |  |
| Elenco | Orçamento |  |  |  |
| Produtor | Staff |  | 18.75 |  |

## Schedule

| ID | WBS | Task | Type | Duration | Start | Finish | Predecessors | Total slack | Free slack | Constraint | Deadline | Calendar | Resources | Work | Cost |
| --- | --- | --- | --- | --- | --- | --- | --- | --- | --- | --- | --- | --- | --- | --- | --- |
| 1 | 1 | Início do Projeto | milestone | 0d | 2024-01-01 | 2024-01-01 |  | 0d |  |  |  |  |  |  |  |
| 2 | 2 | **Etapa 1 - Criação** |  | 13d | 2024-01-01 | 2024-01-19 | 1 | 0d |  |  |  |  |  | 220h | 11,525 |
| 3 | 2.1 | Fazer Brainstorm de criação |  | 4h | 2024-01-01 | 2024-01-01 |  | 0d |  |  |  |  | Diretor; Diretor de Fotografia; Editor; Figurinista; Produtor Executivo (usuário); Roteirista; Produtor | 28h | 1,525 |
| 4 | 2.2 | Criar Roteiro |  | 10d | 2024-01-02 | 2024-01-17 | 3FS+4h | 0d |  |  |  |  | Roteirista; Diretor | 160h | 6,000 |
| 5 | 2.3 | Criar Storyboard |  | 2d | 2024-01-18 | 2024-01-19 | 4 | 0d |  |  |  |  | Desenhista; Designer | 32h | 4,000 |
| 6 | 3 | Término Etapa 1 | milestone | 0d | 2024-01-19 | 2024-01-19 | 2 | 36.5d |  |  |  |  |  |  |  |
| 7 | 4 | **Etapa 2 - Planejamento** |  | 20d | 2024-01-22 | 2024-02-23 |  | 0d |  |  |  |  |  | 724h | 26,675 |
| 8 | 4.1 | Selecionar Casting |  | 5d | 2024-01-22 | 2024-01-26 | 5 | 0d |  |  |  |  | Diretor [25%]; Produtor [300%] | 130h | 2,625 |
| 9 | 4.2 | Selecionar Locações de Filmagem |  | 10d | 2024-01-22 | 2024-02-02 | 8SS | 0d |  |  |  |  | Diretor [25%]; Diretor de Fotografia [50%]; Produtor Executivo (usuário) [25%]; Produtor [200%] | 240h | 5,500 |
| 10 | 4.3 | Definir Equipamentos de Filmagem |  | 1d | 2024-02-05 | 2024-02-06 | 9 | 0.5d | 0d |  |  |  | Técnico de Filmagem; Produtor | 16h | 1,350 |
| 11 | 4.4 | Definir Equipe de Filmagem |  | 1d | 2024-02-07 | 2024-02-08 | 10 | 0.5d | 0d |  |  |  | Técnico de Filmagem; Produtor | 16h | 1,350 |
| 12 | 4.5 | Definir Equipamentos de Audio |  | 1d | 2024-02-05 | 2024-02-06 | 9 | 0.5d | 0d |  |  |  | Técnico de Áudio; Produtor | 16h | 1,350 |
| 13 | 4.6 | Definir Equipe de Audio |  | 1d | 2024-02-07 | 2024-02-08 | 12 | 0.5d | 0d |  |  |  | Técnico de Áudio; Produtor | 16h | 1,350 |
| 14 | 4.7 | Definir Equipamentos de Iluminação |  | 1d | 2024-02-05 | 2024-02-06 | 9 | 0d |  |  |  |  | Diretor de Fotografia; Técnico de Iluminação; Produtor | 24h | 1,550 |
| 15 | 4.8 | Definir Equipe de Iluminação |  | 1d | 2024-02-07 | 2024-02-08 | 14 | 0d |  |  |  |  | Diretor de Fotografia; Técnico de Iluminação; Produtor | 24h | 1,550 |
| 16 | 4.9 | Planejar Produção e Operação |  | 2.5d | 2024-02-14 | 2024-02-16 | 10, 11, 12, 13, 14, 15FS+4h | 0d |  |  |  |  | Produtor Executivo (usuário) [50%]; Produtor [300%] | 70h | 1,500 |
| 17 | 4.10 | Planejar Montagem de Cenários |  | 2d | 2024-02-15 | 2024-02-16 | 16FS-2d | 21.5d |  |  |  |  | Cenografista; Produtor Executivo (usuário) [25%]; Produtor [200%] | 52h | 2,350 |
| 18 | 4.11 | Planejar Figurino |  | 1d | 2024-02-19 | 2024-02-19 | 16 | 20.5d |  |  |  |  | Figurinista; Produtor [300%] | 32h | 650 |
| 19 | 4.12 | Planejar Deslocamento das Equipes |  | 0.5d | 2024-02-09 | 2024-02-09 | 11, 13, 15 | 24d |  |  |  |  | Produtor [200%] | 8h | 150 |
| 20 | 4.13 | Definir Cronograma de Filmagens |  | 3d | 2024-02-21 | 2024-02-23 | 16FS+2d | 0d |  |  | 2024-02-23 |  | Diretor de Fotografia; Produtor Executivo (usuário) [50%]; Diretor | 40h | 1,300 |
| 21 | 4.14 | Definir Cronograma de Edição |  | 2d | 2024-02-21 | 2024-02-22 | 20SS | 17.5d |  |  |  |  | Editor; Diretor | 24h | 3,500 |
| 22 | 4.15 | Criar Orçamento e Planejamento Financeiro |  | 2d | 2024-02-19 | 2024-02-20 | 16 | 1d | 0d |  |  |  | Produtor Executivo (usuário) | 16h | 600 |
| 23 | 5 | Término Etapa 2 | milestone | 0d | 2024-02-23 | 2024-02-23 | 7 | 16.5d |  |  |  |  |  |  |  |
| 24 | 6 | **Etapa 3 - Execução** |  | 8d | 2024-02-21 | 2024-03-01 |  | 1d | 0d |  |  |  |  | 644h | 104,600 |
| 25 | 6.1 | Contratações dos Serviços e Equipes |  | 2d | 2024-02-21 | 2024-02-22 | 22 | 1d |  |  | 2024-02-23 |  | Produtor Executivo (usuário) [50%]; Produtor [200%] | 40h | 900 |
| 26 | 6.2 | Realizar Ajustes no Local |  | 1d | 2024-02-26 | 2024-02-26 | 25, 20 | 0d |  | as late as possible |  |  | Diretor; Diretor de Fotografia; Cenografista; Produtor [300%] | 48h | 1,750 |
| 27 | 6.3 | Montar Cenário |  | 1d | 2024-02-26 | 2024-02-27 | 26 | 0d |  |  |  |  | Cenografista; Projeto Cenografia | 8h | 9,300 |
| 28 | 6.4 | Montar Equipamentos de Filmagem |  | 4h | 2024-02-28 | 2024-02-28 | 27 | 0d |  |  |  |  | Técnico de Filmagem; Cameraman [500%]; Câmeras [5 unid.]; Cabos [120 m.]; Produtor | 12h | 4,375 |
| 29 | 6.5 | Montar Equipamentos de Audio |  | 4h | 2024-02-28 | 2024-02-28 | 27 | 0d |  |  |  |  | Técnico de Áudio; Operador de Som [300%]; Microfones [4 unid.]; Mesa de Som [1 unid.]; Cabos [100 m.]; Produtor | 12h | 2,975 |
| 30 | 6.6 | Montar Equipamentos de Iluminação |  | 4h | 2024-02-28 | 2024-02-28 | 27 | 0d |  |  |  |  | Técnico de Iluminação; Spots de Luz [12 unid.]; Iluminador [200%]; Mesa de Luz [1 unid.]; Cabos [250 m.]; Produtor | 12h | 6,825 |
| 31 | 6.7 | Testar Equipamentos |  | 4h | 2024-02-28 | 2024-02-28 | 28, 29, 30 | 0d |  |  |  |  | Técnico de Áudio; Técnico de Filmagem; Técnico de Iluminação; Operador de Som [300%]; Iluminador [200%]; Cameraman [500%] | 52h | 5,800 |
| 32 | 6.8 | Realizar Ensaios |  | 1d | 2024-02-29 | 2024-02-29 | 31 | 0d |  | must start on 2024-02-29 |  |  | Diretor; Iluminador [200%]; Cameraman [500%]; Operador de Som [300%]; Diretor de Fotografia; Artista 1 [50%]; Artista 2 [50%]; Artista 3 [50%]; Artista 4 [50%]; Microfones [4 unid.]; Gerador [1 unid.]; Câmeras [5 unid.]; Roteirista; Cabos [470 m.]; Mesa de Luz [1 unid.]; Mesa de Som [1 unid.]; Spots de Luz [12 unid.]; Técnico de Áudio; Técnico de Filmagem; Técnico de Iluminação; Produtor [500%] | 184h | 29,850 |
| 33 | 6.9 | Realizar Filmagens |  | 1d | 2024-03-01 | 2024-03-01 | 32 | 0d |  | must start on 2024-03-01 |  | Dia de Filmagem | Roteirista; Artista 1; Artista 2; Artista 3; Artista 4; Cameraman [500%]; Diretor; Diretor de Fotografia; Iluminador [200%]; Operador de Som [300%]; Cabos [470 m.]; Câmeras [5 unid.]; Gerador [1 unid.]; Mesa de Luz [1 unid.]; Mesa de Som [1 unid.]; Microfones [4 unid.]; Spots de Luz [12 unid.]; Técnico de Áudio; Técnico de Filmagem; Técnico de Iluminação; Produtor [500%] | 200h | 34,850 |
| 34 | 6.10 | Desmontar Local |  | 0.5d | 2024-03-01 | 2024-03-01 | 33 | 26d |  |  |  | Dia de Filmagem | Cenografista; Técnico de Áudio; Técnico de Filmagem; Cameraman [500%]; Iluminador [200%]; Operador de Som [300%]; Técnico de Iluminação; Produtor [500%] | 76h | 6,575 |
| 35 | 6.11 | Limpar Local |  | 0.5d | 2024-03-01 | 2024-03-01 | 33 | 26d |  |  |  | Dia de Filmagem | Serviço de Limpeza |  | 1,400 |
| 36 | 7 | Término Etapa 3 | milestone | 0d | 2024-03-01 | 2024-03-01 | 24 | 11.5d |  |  |  |  |  |  |  |

Notes:
- 3: Objetivos: / Definir conceito e ideia geral da campanha / Definir ações / Definir garoto propaganda / OBS: A criação da campanha deve se adequar a realidade de verba definida em reunião conjunta com a equipe de planejamento e cliente, vide documento "Briefing" em anexo.

| ID | WBS | Task | Type | Duration | Start | Finish | Predecessors | Total slack | Resources | Work | Cost |
| --- | --- | --- | --- | --- | --- | --- | --- | --- | --- | --- | --- |
| 37 | 8 | **Etapa 4 - Pós Produção** |  | 11.5d | 2024-03-04 | 2024-03-19 |  | 0d |  | 150h | 27,425 |
| 38 | 8.1 | Decupar Material |  | 1d | 2024-03-04 | 2024-03-04 | 33 | 0d | Editor | 8h | 1,600 |
| 39 | 8.2 | Editar Vídeo |  | 3d | 2024-03-05 | 2024-03-07 | 38 | 0d | Editor; Diretor [25%] | 30h | 5,025 |
| 40 | 8.3 | Inserir Efeitos Especiais |  | 5d | 2024-03-08 | 2024-03-14 | 39 | 0d | Animador (Efeitos Especiais); Editor | 80h | 16,000 |
| 41 | 8.4 | Realizar Tratamento e Correções |  | 2d | 2024-03-15 | 2024-03-18 | 40 | 0d | Editor; Designer | 32h | 4,800 |
| 42 | 8.5 | Renderizar |  | 4h | 2024-03-19 | 2024-03-19 | 41 | 0d |  |  |  |
| 43 | 8.6 | Entrega | milestone | 0d | 2024-03-19 | 2024-03-19 | 42 | 0d |  |  |  |
| 44 | 9 | Término do Projeto | milestone | 0d | 2024-03-19 | 2024-03-19 | 37 | 0d |  |  |  |
